# WebRTC - platform work

Schedule from GanttProject, 2013-06-10 to 2015-08-07.
Mozilla

## Calendars

- Project calendar: Mon-Fri working; Sat-Sun off.

## Resources

| Resource | Group |
| --- | --- |
| Adam Roach | Developer |
| Ben Brittain | Developer |
| Ethan Hugg | Developer |
| Eric Rescorla | Developer |
| Randell Jesup | Developer |
| Jan-Ivar Bruaroey | Developer |
| Meadhbh Hamrick | Developer |
| Paul Adenot | Developer |
| Network eng 1 | Developer |
| Network eng 2 | Developer |
| Randy Lin | Developer |
| Ralph Giles | Developer |
| Robert O'Callahan | Developer |
| Ryan (intern) | Developer |
| Shelly | Developer |
| Alfredo Yang | Developer |
| UX + frontend 1 |  |
| Adam Cain | Developer |
| Ted M | Developer |
| UX + frontend 2 |  |
| UX + frontend 3 |  |
| UX + frontend 4 |  |
| Test eng (from Marc S) | Developer |
| Identity eng (Jed's team) | Developer |
| Shian-Yow | Developer |
| GCP | Developer |
| Suhas | Developer |

## Schedule

| ID | Task | Duration | Start | Finish | Predecessors | Resources |
| --- | --- | --- | --- | --- | --- | --- |
| 1 | Persona Integration | 45d | 2013-06-21 | 2013-08-22 |  | Ryan (intern) |
| 2 | Generic identity | 23d | 2013-08-23 | 2013-09-24 | 1 | Ryan (intern) |
| 3 | Audio recoding (recording api) | 23d | 2013-06-21 | 2013-07-23 |  | Randy Lin [50%]; Shelly [50%] |
| 4 | Video recording (recording api) | 68d | 2013-07-24 | 2013-10-25 | 3 | Shelly |
| 5 | Bug fixes, updates, spec work, helping others - jesup (30%) | 360d | 2013-06-10 | 2014-10-24 |  | Randell Jesup [30%] |
| 6 | Audio latency acceptable | 64d | 2013-06-17 | 2013-09-12 |  | Randell Jesup [70%] |
| 7 | audio latency & pipline - excellent | 64d | 2013-09-13 | 2013-12-11 | 6 | Randell Jesup [70%] |
| 8 | AEC that spans all devices | 64d | 2013-12-12 | 2014-03-11 | 7 | Randell Jesup [70%] |
| 9 | Media performance instrumentation | 33d | 2014-03-12 | 2014-04-25 | 8 | Randell Jesup [70%] |
| 10 | Global media congestion control | 64d | 2014-04-28 | 2014-07-24 | 9 | Randell Jesup [70%] |
| 11 | Combined media/data congestion control | 64d | 2014-07-25 | 2014-10-22 | 10 | Randell Jesup [70%] |
| 12 | Audio latency measurement & backend | 23d | 2013-08-19 | 2013-09-18 |  | Paul Adenot |
| 13 | Plan for quality eval infrastructure | 45d | 2013-09-19 | 2013-11-20 | 12 | Paul Adenot |
| 14 | Implement quality evaluations infrastructure | 135d | 2013-11-21 | 2014-05-28 | 13 | Paul Adenot |
| 15 | Multiple simultaneous PCs instrumentation & analysis | 23d | 2014-05-29 | 2014-06-30 | 14 | Paul Adenot |
| 16 | Multiple simultaneous PCs working acceptably | 45d | 2014-07-01 | 2014-09-01 | 15 | Paul Adenot |
| 17 | Multiple simulatneous PCs - working well | 68d | 2014-09-02 | 2014-12-04 | 16 | Paul Adenot |
| 18 | CPU overload control (design & impl) | 45d | 2013-07-22 | 2013-09-20 |  | GCP |
| 19 | video performance measurements | 45d | 2013-07-15 | 2013-09-13 |  | Ben Brittain |
| 20 | Statistics API - basic (telemetry) | 23d | 2013-07-24 | 2013-08-23 |  | Jan-Ivar Bruaroey |
| 21 | gUM constraints | 68d | 2013-08-26 | 2013-11-27 | 20 | Jan-Ivar Bruaroey |
| 22 | Non-interactive device selection (persistent/named devices) | 68d | 2013-11-28 | 2014-03-03 | 21, 26 | Jan-Ivar Bruaroey |
| 23 | Implement persistent permissions | 45d | 2014-03-04 | 2014-05-05 | 22, 27 | Jan-Ivar Bruaroey |
| 24 | Screen sharing implementation | 68d | 2014-05-06 | 2014-08-07 | 23, 28 | Jan-Ivar Bruaroey |
| 25 | Statistics API - remaining work | 68d | 2014-08-08 | 2014-11-11 | 24 | Jan-Ivar Bruaroey |
| 26 | UX for non-interactive device selectiona | 45d | 2013-09-09 | 2013-11-08 |  | UX + frontend 3 |
| 27 | persistent permissions UI | 67d | 2013-10-01 | 2014-01-01 |  | UX + frontend 2 |
| 28 | Screen sharing UX/UI | 68d | 2013-10-07 | 2014-01-08 |  | UX + frontend 4 |
| 29 | Full Media Stream support | 23d | 2013-08-01 | 2013-09-02 |  | Robert O'Callahan |
| 30 | Decouple video frame from audio frame delivery | 68d | 2013-09-03 | 2013-12-05 | 29 | Robert O'Callahan |
| 31 | SDP max frame size, impl rfc 6236 | 45d | 2013-07-01 | 2013-08-30 |  | Shian-Yow |
| 32 | Standardization work - abr (40%) | 540d | 2013-06-10 | 2015-07-03 |  | Adam Roach [40%] |
| 33 | Call set up latency instrumentation & analysis | 18d | 2013-08-05 | 2013-08-28 |  | Adam Roach [60%] |
| 34 | Improvements to call set up latency | 47d | 2013-08-29 | 2013-11-01 | 33 | Adam Roach [60%] |
| 35 | Implement taking deltas in SDP | 75d | 2013-11-04 | 2014-02-14 | 34 | Adam Roach [60%] |
| 36 | BUNDLE - signaling | 45d | 2014-10-13 | 2014-12-12 | 35, 38 | Adam Roach [60%] |
| 37 | SDP renegotiation (multiflows, 1+audio, 1+video) | 135d | 2014-10-13 | 2015-04-17 | 38 | Ethan Hugg [50%] |
| 38 | Implement Signaling supprt for more than 1 audio + 1 video | 225d | 2013-12-02 | 2014-10-10 | 39 | Ethan Hugg [50%] |
| 39 | Plan & scope signaling support for more than 1 audio/1 video | 45d | 2013-09-30 | 2013-11-29 | 40 | Ethan Hugg [50%] |
| 40 | SDP renegotiation via new offer/anwer pair (only 1 audio, 1 video) | 45d | 2013-07-29 | 2013-09-27 |  | Ethan Hugg [50%] |
| 41 | Investigating & fixing bug reports form the field including Android help - ehugg (50%) | 540d | 2013-07-15 | 2015-08-07 |  | Ethan Hugg [50%] |
| 42 | RTP/RTCP-mux | 23d | 2013-08-19 | 2013-09-18 |  | Suhas [50%] |
| 43 | BUNDLE - transport | 45d | 2014-11-10 | 2015-01-09 | 38, 44 | Eric Rescorla [50%] |
| 44 | ICE state reporting | 90d | 2014-07-07 | 2014-11-07 | 45 | Eric Rescorla [50%] |
| 45 | ICE Unit tests with simulated NAT | 120d | 2014-01-20 | 2014-07-04 | 46 | Eric Rescorla [50%] |
| 46 | Trickle ICE generation | 90d | 2013-09-16 | 2014-01-17 | 47 | Eric Rescorla [50%] |
| 47 | TURN TCP | 45d | 2013-07-15 | 2013-09-13 |  | Eric Rescorla [50%] |
| 48 | B2G work, spec work - ekr (50%) | 540d | 2013-06-10 | 2015-07-03 |  | Eric Rescorla [50%] |
| 49 | Isolated streams (goes with sec prop ui, persona) | 23d | 2013-10-02 | 2013-11-01 | 50 | Identity eng (Jed's team) |
| 50 | "security properties" UI | 67d | 2013-07-01 | 2013-10-01 |  | UX + frontend 1 |
| 51 | Persistent DTLS keys | 60d | 2013-08-05 | 2013-10-25 |  | Meadhbh Hamrick |
| 52 | Detection of network failure | 45d | 2013-08-19 | 2013-10-18 |  | Network eng 1 |
| 53 | Update ICE/ICE restart | 68d | 2013-10-21 | 2014-01-22 | 52 | Network eng 1 |
| 54 | Detailed ICE status reporting to JS | 45d | 2014-01-23 | 2014-03-26 | 53 | Network eng 1 |
| 55 | Networking testbed and ICE e2d tests | 158d | 2014-03-27 | 2014-11-03 | 54 | Network eng 1 |
| 56 | Build infrastructure to make multiple machine testing work | 45d | 2013-07-15 | 2013-09-13 |  | Adam Cain |
| 57 | Full interop testbed (variety of devices) | 202d | 2014-03-06 | 2014-12-12 | 58 | Network eng 2 |
| 58 | Networking support for more than 1 audio + 1 video | 68d | 2013-12-02 | 2014-03-05 | 59 | Network eng 2 |
| 59 | Implement error reporting behavior | 45d | 2013-09-30 | 2013-11-29 |  | Network eng 2 |
| 60 | Full suite of mochitests | 202d | 2013-09-09 | 2014-06-17 |  | Test eng (from Marc S) |
| 61 | Automated networking test bed | 202d | 2013-07-11 | 2014-04-18 |  | Ted M |
| 62 | Improve Opus stereo support in GIPS | 135d | 2014-02-20 | 2014-08-27 | 63 | Ralph Giles |
| 63 | Implement stereo in media pipeline | 23d | 2014-01-20 | 2014-02-19 |  | Ralph Giles |
